# Construction schedule v1.0

How a schedule from an IFC model changed from version to version. A marks actual dates.

## Version 1 (saved 2026-11-01)

Note of the change: feat(planning): add Carport hardware schedule and IFC tooling

| ID | Task | Duration | Start | Finish | Predecessors | Total float |
| --- | --- | --- | --- | --- | --- | --- |
| 1 | **01 - Current position and program decisions** | 25d | 2026-11-02 | 2026-12-04 |  | 2d |
| 1.1 | Planning start - Rev0 complete; Rev1 schematic in review and layout underway | 0d | 2026-11-02 | 2026-11-02 |  | 2d |
| 1.2 | Confirm US/Canada launch requirements and installation envelope | 5d | 2026-11-02 | 2026-11-06 | 1.1 | 2d |
| 1.3 | Agree certification and qualification matrix with accredited lab | 10d | 2026-11-09 | 2026-11-20 | 1.2 | 12d |
| 1.4 | Select overseas build partners and reserve indicative capacity | 10d | 2026-11-09 | 2026-11-20 | 1.2 | 12d |
| 1.5 | Approve sample allocation and destructive-test budgets | 5d | 2026-11-23 | 2026-11-27 | 1.3, 1.4 | 12d |
| 1.6 | Evaluate physical SIM / eUICC provider and roaming | 15d | 2026-11-09 | 2026-11-27 | 1.2 | 39d |
| 1.7 | Evaluate nRF9151 satellite service and supported hardware/firmware | 20d | 2026-11-09 | 2026-12-04 | 1.2 | 34d |
| 1.8 | G0 - Requirements, test strategy and supplier assumptions accepted | 0d | 2026-11-27 | 2026-11-27 | 1.3, 1.4, 1.5 | 39d |
| 2 | **02 - Rev1 PCB and prototype housing release** | 25d | 2026-11-09 | 2026-12-11 |  | 2d |
| 2.1 | Close Rev1 schematic review and BOM metadata | 7d | 2026-11-09 | 2026-11-17 | 1.2 | 5d |
| 2.2 | Bound Rev1 input fault stresses before destructive testing | 10d | 2026-11-09 | 2026-11-20 | 1.2 | 2d |
| 2.3 | Complete Rev1 routing and RF / power / mechanical review | 10d | 2026-11-23 | 2026-12-04 | 2.1, 2.2 | 2d |
| 2.4 | Rev1 PCBA DFM, AVL availability and release package | 5d | 2026-12-07 | 2026-12-11 | 2.3, 1.4 | 2d |
| 2.5 | G1 - Release Rev1 PCBA prototype run | 0d | 2026-12-11 | 2026-12-11 | 2.4 | 2d |
| 2.6 | Design clamshell and interfaces for prototype manufacture | 10d | 2026-11-09 | 2026-11-20 | 1.2 | 19d |
| 2.7 | Select humidity vent and MEMS acoustic membrane stacks | 10d | 2026-11-09 | 2026-11-20 | 1.2 | 19d |
| 2.8 | Print housing variants and hand-build membrane/grill/pigtail prototypes | 10d | 2026-11-23 | 2026-12-04 | 2.6, 2.7 | 19d |
| 2.9 | Evaluate printed enclosure fit, acoustic/RH and cable interfaces | 5d | 2026-12-07 | 2026-12-11 | 2.8, 2.3 | 19d |
| 3 | **03 - Rev1 EVT build and integrated learning** | 46d | 2026-11-18 | 2027-01-29 |  | 1d |
| 3.1 | Fabricate and assemble Rev1 engineering boards | 15d | 2026-12-14 | 2027-01-04 | 2.5, 1.5 | 2d |
| 3.2 | Rev1 board shipment, import and incoming inspection | 5d | 2027-01-05 | 2027-01-09 | 3.1 | 2d |
| 3.3 | External gate - Rev1 bring-up firmware and diagnostic tools | 15d | 2026-11-18 | 2026-12-08 | 2.1 | 17d |
| 3.4 | Bring up Rev1 PCBA with current-limited staged power | 5d | 2027-01-11 | 2027-01-15 | 3.2, 3.3 | 1d |
| 3.5 | Rev1 power, input fault screening and radio transient tests | 10d | 2027-01-18 | 2027-01-29 | 3.4, 2.2 | 1d |
| 3.6 | Rev1 antenna, coexistence and EMC pre-scan | 10d | 2027-01-18 | 2027-01-29 | 3.4, 2.9 | 1d |
| 3.7 | Rev1 integrated membrane, housing and sensor experiments | 10d | 2027-01-18 | 2027-01-29 | 3.4, 2.9 | 1d |
| 3.8 | G2 - Rev1 EVT findings and Rev2 change list approved | 0d | 2027-01-29 | 2027-01-29 | 3.5, 3.6, 3.7, 1.8 | 1d |
| 4 | **04 - Rev2 and tool-ready design freeze** | 20d | 2027-01-29 | 2027-03-01 |  | 1d |
| 4.1 | G3a - Cellular SIM and satellite launch decision | 0d | 2027-01-29 | 2027-01-29 | 1.6, 1.7, 3.8 | 1d |
| 4.2 | Rev2 electrical changes, worst-case closure and schematic review | 10d | 2027-02-01 | 2027-02-12 | 3.8, 4.1 | 1d |
| 4.3 | Rev2 layout, RF and DFM review | 10d | 2027-02-16 | 2027-03-01 | 4.2 | 1d |
| 4.4 | Tool-ready enclosure, vent process and cable assembly DFM | 10d | 2027-02-01 | 2027-02-12 | 3.8, 4.1 | 6d |
| 4.5 | Cross-discipline design risk and verification review | 5d | 2027-02-16 | 2027-02-22 | 4.2, 4.4 | 6d |
| 4.6 | Approve mold design, tooling contract and trial plan | 5d | 2027-02-22 | 2027-02-26 | 4.4, 1.4 | 2d |
| 4.7 | G3 - Release Rev2 PCBA and housing tooling | 0d | 2027-03-01 | 2027-03-01 | 4.3, 4.6, 4.5, 1.3 | 1d |
| 5 | **05 - Rev2 / T1 first molded integration** | 43d | 2027-03-02 | 2027-04-30 |  | 0d |
| 5.1 | Build Rev2 production-intent boards | 15d | 2027-03-02 | 2027-03-22 | 4.7 | 1d |
| 5.2 | Ship and inspect Rev2 boards | 5d | 2027-03-23 | 2027-03-27 | 5.1 | 1d |
| 5.3 | External gate - Rev2 DVT and RF test firmware | 15d | 2027-03-02 | 2027-03-22 | 4.7 | 3d |
| 5.4 | Validate Rev2 electrical fixes before enclosed DVT | 10d | 2027-03-29 | 2027-04-09 | 5.2, 5.3 | 0d |
| 5.5 | T1 - Cut clamshell and included strain-relief tooling | 20d | 2027-03-02 | 2027-03-29 | 4.7 | 1d |
| 5.6 | T1 - First shots, supplier metrology and assembly samples | 5d | 2027-03-30 | 2027-04-05 | 5.5 | 1d |
| 5.7 | T1 - Air shipment and incoming sample inspection | 5d | 2027-04-06 | 2027-04-10 | 5.6 | 1d |
| 5.8 | T1 - Mechanical and electrical assembly evaluation | 5d | 2027-04-12 | 2027-04-16 | 5.7, 5.4 | 0d |
| 5.9 | G4 - T1 integrated evaluation and correction list accepted | 0d | 2027-04-16 | 2027-04-16 | 5.8 | 10d |
| 5.10 | Production-intent Rev2 / T1 EMC and RF readiness pre-scan | 10d | 2027-04-19 | 2027-04-30 | 5.8, 1.3 | 0d |
| 6 | **06 - T2 correction and preproduction validation** | 29d | 2027-05-03 | 2027-06-11 |  | 0d |
| 6.1 | Freeze T2 correction package and final test limits | 5d | 2027-05-03 | 2027-05-07 | 5.9, 5.10 | 0d |
| 6.2 | T2 - Tool corrections and process adjustments | 10d | 2027-05-10 | 2027-05-21 | 6.1 | 0d |
| 6.3 | T2 - Repeat trial and supplier first-article inspection | 2d | 2027-05-24 | 2027-05-25 | 6.2 | 0d |
| 6.4 | T2 - Air shipment and incoming inspection | 5d | 2027-05-26 | 2027-05-30 | 6.3 | 0d |
| 6.5 | T2 - Integrated mechanical and electrical evaluation | 10d | 2027-05-31 | 2027-06-11 | 6.4 | 0d |
| 6.6 | G5 - T2 preproduction candidate accepted | 0d | 2027-06-11 | 2027-06-11 | 6.5 | 0d |
| 7 | **07 - Formal qualification and US/Canada market access** | 112d | 2027-03-02 | 2027-08-10 |  | 0d |
| 7.1 | Confirm lab bookings, sample matrix and regulatory configuration | 5d | 2027-03-02 | 2027-03-08 | 4.7, 1.3 | 67d |
| 7.2 | Formal vehicle electrical / ESD qualification | 10d | 2027-06-14 | 2027-06-25 | 6.6, 7.1 | 20d |
| 7.3 | Formal enclosure, environmental and cable qualification | 20d | 2027-06-14 | 2027-07-12 | 6.6, 7.1 | 10d |
| 7.4 | US FCC / Canada ISED host RF, emissions and exposure assessment | 30d | 2027-06-14 | 2027-07-26 | 6.6, 7.1, 5.3 | 0d |
| 7.5 | Cellular/operator and conditional NTN acceptance | 30d | 2027-06-14 | 2027-07-26 | 6.6, 4.1, 7.1 | 0d |
| 7.6 | Complete Bluetooth product qualification | 10d | 2027-06-14 | 2027-06-25 | 6.6, 5.3 | 20d |
| 7.7 | Battery, transport, material and product safety documentation | 15d | 2027-06-14 | 2027-07-05 | 6.6 | 15d |
| 7.8 | Approve final labels, installation instructions and compliance file | 10d | 2027-07-27 | 2027-08-10 | 7.4, 7.5, 7.6, 7.7 | 0d |
| 7.9 | Visible qualification / lab retest contingency | 10d | 2027-07-27 | 2027-08-10 | 7.4, 7.5, 7.2, 7.3, 7.7 | 0d |
| 7.10 | G6 - Qualification and US/Canada release evidence accepted | 0d | 2027-08-10 | 2027-08-10 | 7.8, 7.9, 7.6 | 0d |
| 8 | **08 - Manufacturing system and software handoff gates** | 112d | 2027-03-02 | 2027-08-10 |  | 0d |
| 8.1 | Design production programming and end-of-line fixtures | 10d | 2027-03-02 | 2027-03-15 | 4.7, 1.5 | 72d |
| 8.2 | Build and correlate fixtures with golden/reference units | 15d | 2027-04-12 | 2027-04-30 | 8.1, 5.4 | 58d |
| 8.3 | External gate - Factory firmware, provisioning and test tools | 20d | 2027-03-23 | 2027-04-20 | 5.3, 8.1 | 67d |
| 8.4 | External gate - Integrated product release candidate | 30d | 2027-03-23 | 2027-05-04 | 5.3, 4.1 | 67d |

| ID | Task | Duration | Start | Finish | Predecessors | Total float |
| --- | --- | --- | --- | --- | --- | --- |
| 8.5 | Create assembly SOPs, quality control and training package | 10d | 2027-06-14 | 2027-06-25 | 6.6, 8.2, 8.3 | 30d |
| 8.6 | Approve production material availability and logistics plan | 20d | 2027-06-14 | 2027-07-09 | 6.6, 1.4, 4.1 | 22d |
| 8.7 | G7 - Controlled pilot build readiness | 0d | 2027-08-10 | 2027-08-10 | 8.5, 8.6, 8.2, 8.3, 8.4, 7.10 | 0d |
| 9 | **09 - Pilot, production release and ramp** | 62d | 2027-08-11 | 2027-11-08 |  | 0d |
| 9.1 | Run PVT pilot on intended overseas production line | 10d | 2027-08-11 | 2027-08-24 | 8.7 | 0d |
| 9.2 | Ship pilot units and verify receiving / fulfillment process | 5d | 2027-08-25 | 2027-08-29 | 9.1 | 0d |
| 9.3 | Supervised US/Canada vehicle pilot and soak | 15d | 2027-08-30 | 2027-09-20 | 9.2 | 0d |
| 9.4 | Close pilot defects and approve yield / quality evidence | 5d | 2027-09-21 | 2027-09-27 | 9.3 | 0d |
| 9.5 | G8 - Authorize mass production release | 0d | 2027-09-27 | 2027-09-27 | 9.4, 7.10 | 0d |
| 9.6 | Build first mass-production lot and controlled ramp | 20d | 2027-09-28 | 2027-11-01 | 9.5 | 0d |
| 9.7 | First MP lot outgoing audit and shipment release | 5d | 2027-11-02 | 2027-11-08 | 9.6 | 0d |
| 9.8 | G9 - First mass-production lot ready to ship | 0d | 2027-11-08 | 2027-11-08 | 9.7 | 0d |

## Version 2 (saved 2026-11-01)

Note of the change: feat(planning): overlap qualification with Rev2 and T1 builds

Last finish 2027-11-08 → 2027-09-22 (-47d).

Added:

| ID | Task | Duration | Start | Finish | Predecessors |
| --- | --- | --- | --- | --- | --- |
| 5.5 | Complete Rev2 electrical fix verification alongside lab testing | 8d | 2027-03-31 | 2027-04-09 | 5.4 |
| 5.11 | Rev2 EMC / RF readiness pre-scan using prototype housing | 10d | 2027-03-31 | 2027-04-13 | 5.4, 2.9, 7.1 |
| 7.6 | T1 US FCC / Canada ISED host RF, emissions and exposure assessment | 30d | 2027-04-21 | 2027-06-02 | 7.2, 5.3 |
| 7.7 | Rev2 cellular/operator and conditional NTN conducted / protocol campaign | 20d | 2027-03-31 | 2027-04-27 | 5.4, 4.1, 7.1 |
| 7.11 | T2 change-impact review and qualification carry-forward decision | 3d | 2027-06-04 | 2027-06-08 | 6.6, 7.6, 7.8, 7.3, 7.4, 7.5, 7.9, 7.10 |
| 7.12 | Prepare labels, installation instructions and compliance file | 10d | 2027-06-03 | 2027-06-16 | 7.6, 7.8, 7.9, 7.10 |
| 7.13 | T2 delta retests / lab confirmation reserve | 10d | 2027-06-09 | 2027-06-22 | 7.11 |

Removed: 5.10 Production-intent Rev2 / T1 EMC and RF readiness pre-scan; 7.9 Visible qualification / lab retest contingency

Changed:

| ID | Task | Start | Finish | Duration | Total float | Predecessors | Other |
| --- | --- | --- | --- | --- | --- | --- | --- |
| 5 | **05 - Rev2 / T1 first molded integration** |  | 2027-04-30 → 2027-04-16 (-14d) | 43d → 33d | 0d → -3d |  |  |
| 5.4 | Rev2 incoming bring-up and early lab sample release |  | 2027-04-09 → 2027-03-30 (-10d) | 10d → 2d | 0d → -1d |  | was named Validate Rev2 electrical fixes before enclosed DVT |
| 5.9 | T1 - Mechanical and electrical assembly evaluation |  |  |  | 0d → -1d | 5.8, 5.4 → 5.8, 5.5 |  |
| 6 | **06 - T2 correction and preproduction validation** | 2027-05-03 → 2027-04-19 (-14d) | 2027-06-11 → 2027-06-03 (-8d) | 29d → 33d | 0d → -1d |  |  |
| 6.1 | Freeze T2 correction package and final test limits | 2027-05-03 → 2027-04-19 (-14d) | 2027-05-07 → 2027-04-23 (-14d) |  | 0d → -1d | 5.10, Production-intent Rev2 / T1 EMC and RF readiness pre-scan → 5.10, 5.11 |  |
| 6.2 | T2 - Tool corrections and process adjustments | 2027-05-10 → 2027-04-26 (-14d) | 2027-05-21 → 2027-05-12 (-9d) |  | 0d → -1d |  |  |
| 6.3 | T2 - Repeat trial and supplier first-article inspection | 2027-05-24 → 2027-05-13 (-11d) | 2027-05-25 → 2027-05-14 (-11d) |  | 0d → -1d |  |  |
| 6.4 | T2 - Air shipment and incoming inspection | 2027-05-26 → 2027-05-15 (-11d) | 2027-05-30 → 2027-05-19 (-11d) |  | 0d → -1d |  |  |
| 6.5 | T2 - Integrated mechanical and electrical evaluation | 2027-05-31 → 2027-05-20 (-11d) | 2027-06-11 → 2027-06-03 (-8d) |  | 0d → -1d |  |  |
| 6.6 | G5 - T2 preproduction candidate accepted | 2027-06-11 → 2027-06-03 (-8d) | 2027-06-11 → 2027-06-03 (-8d) |  | 0d → -1d |  |  |
| 7 | **07 - Rev2 / T1 qualification in parallel with T2 tooling** |  | 2027-08-10 → 2027-06-22 (-49d) | 112d → 79d | 0d → 6d |  | was named 07 - Formal qualification and US/Canada market access |
| 7.2 | Accept representative T1 assemblies for formal lab work | 2027-06-14 → 2027-04-19 (-56d) | 2027-06-25 → 2027-04-20 (-66d) | 10d → 2d | 20d → 7d | 6.6, 7.1 → 5.10, 7.1, 5.11 | was named Formal vehicle electrical / ESD qualification |
| 7.3 | Rev2 vehicle power qualification - prototype housing allowed | 2027-06-14 → 2027-03-31 (-75d) | 2027-07-12 → 2027-04-13 (-90d) | 20d → 10d | 10d → 37d | 6.6, 7.1 → 5.4, 7.1 | was named Formal enclosure, environmental and cable qualification |
| 7.4 | T1 accessible-assembly ESD and enclosed thermal confirmation | 2027-06-14 → 2027-04-21 (-54d) | 2027-07-26 → 2027-04-27 (-90d) | 30d → 5d | 0d → 32d | 6.6, 7.1, 5.3 → 7.2, 7.3 | was named US FCC / Canada ISED host RF, emissions and exposure assessment |
| 7.5 | T1 enclosure, environmental and cable qualification | 2027-06-14 → 2027-04-21 (-54d) | 2027-07-26 → 2027-05-18 (-69d) | 30d → 20d | 0d → 17d | 6.6, 4.1, 7.1 → 7.2 | was named Cellular/operator and conditional NTN acceptance |
| 7.8 | T1 cellular OTA / antenna and provider acceptance completion | 2027-07-27 → 2027-04-28 (-90d) | 2027-08-10 → 2027-05-11 (-91d) |  | 0d → 22d | 7.4, 7.5, 7.9, 7.10 → 7.7, 7.2 | was named Approve final labels, installation instructions and compliance file |
| 7.9 | Complete Bluetooth product qualification | 2027-06-14 → 2027-03-31 (-75d) | 2027-06-25 → 2027-04-13 (-73d) |  | 20d → 42d | 6.6, 5.3 → 5.4, 5.3 |  |
| 7.10 | Battery, transport, material and product safety documentation | 2027-06-14 → 2027-03-09 (-97d) | 2027-07-05 → 2027-03-30 (-97d) |  | 15d → 52d | 6.6 → 4.7, 7.1 |  |
| 7.14 | G6 - Qualification and US/Canada release evidence accepted | 2027-08-10 → 2027-06-22 (-49d) | 2027-08-10 → 2027-06-22 (-49d) |  | 0d → 6d | 7.8, Visible qualification / lab retest contingency, 7.9 → 7.12, 7.13, 7.9, 6.6 |  |
| 8 | **08 - Manufacturing system and software handoff gates** |  | 2027-08-10 → 2027-07-02 (-39d) | 112d → 85d | 0d → -1d |  |  |
| 8.2 | Build and correlate fixtures with golden/reference units |  |  |  | 58d → 30d | 8.1, 5.4 → 8.1, 5.5 |  |
| 8.5 | Create assembly SOPs, quality control and training package | 2027-06-14 → 2027-06-04 (-10d) | 2027-06-25 → 2027-06-17 (-8d) |  | 30d → 9d |  |  |
| 8.6 | Approve production material availability and logistics plan | 2027-06-14 → 2027-06-04 (-10d) | 2027-07-09 → 2027-07-01 (-8d) |  | 22d → -1d |  |  |
| 8.7 | G7 - Controlled pilot build readiness | 2027-08-10 → 2027-07-02 (-39d) | 2027-08-10 → 2027-07-02 (-39d) |  |  |  |  |
| 9 | **09 - Pilot, production release and ramp** | 2027-08-11 → 2027-07-02 (-40d) | 2027-11-08 → 2027-09-22 (-47d) | 62d → 57d |  |  |  |
| 9.1 | Run PVT pilot on intended overseas production line | 2027-08-11 → 2027-07-02 (-40d) | 2027-08-24 → 2027-07-15 (-40d) |  |  |  |  |
| 9.2 | Ship pilot units and verify receiving / fulfillment process | 2027-08-25 → 2027-07-16 (-40d) | 2027-08-29 → 2027-07-20 (-40d) |  |  |  |  |
| 9.3 | Supervised US/Canada vehicle pilot and soak | 2027-08-30 → 2027-07-21 (-40d) | 2027-09-20 → 2027-08-11 (-40d) |  |  |  |  |
| 9.4 | Close pilot defects and approve yield / quality evidence | 2027-09-21 → 2027-08-12 (-40d) | 2027-09-27 → 2027-08-18 (-40d) |  |  |  |  |
| 9.5 | G8 - Authorize mass production release | 2027-09-27 → 2027-08-18 (-40d) | 2027-09-27 → 2027-08-18 (-40d) |  |  |  |  |
| 9.6 | Build first mass-production lot and controlled ramp | 2027-09-28 → 2027-08-19 (-40d) | 2027-11-01 → 2027-09-15 (-47d) |  |  |  |  |
| 9.7 | First MP lot outgoing audit and shipment release | 2027-11-02 → 2027-09-16 (-47d) | 2027-11-08 → 2027-09-22 (-47d) |  |  |  |  |
| 9.8 | G9 - First mass-production lot ready to ship | 2027-11-08 → 2027-09-22 (-47d) | 2027-11-08 → 2027-09-22 (-47d) |  |  |  |  |

## Version 3 (saved 2026-11-01)

Note of the change: so far good

Last finish 2027-09-22 → 2027-09-21 (-1d).

Removed: 2.2 Bound Rev1 input fault stresses before destructive testing

Changed:

| ID | Task | Start | Finish | Duration | Total float | Predecessors | Other |
| --- | --- | --- | --- | --- | --- | --- | --- |
| 2 | **02 - Rev1 PCB and prototype housing release** | 2026-11-09 → 2026-11-02 (-7d) |  | 25d → 30d | -1d → 12d |  |  |
| 2.1 | Close Rev1 schematic review and BOM metadata | 2026-11-09 → 2026-11-02 (-7d) | 2026-11-17 → 2026-11-10 (-7d) |  | 2d → 12d | 1.2 → 1.1 |  |
| 2.2 | Complete Rev1 routing and RF / power / mechanical review | 2026-11-23 → 2026-11-11 (-12d) | 2026-12-04 → 2026-11-24 (-10d) |  | -1d → 12d | 2.1, Bound Rev1 input fault stresses before destructive testing → 2.1 |  |
| 2.3 | Rev1 PCBA DFM, AVL availability and release package | 2026-12-07 → 2026-11-25 (-12d) | 2026-12-11 → 2026-12-01 (-10d) |  | -1d → 12d |  |  |
| 2.4 | G1 - Release Rev1 PCBA prototype run | 2026-12-11 → 2026-12-01 (-10d) | 2026-12-11 → 2026-12-01 (-10d) |  | -1d → 12d |  |  |
| 3 | **03 - Rev1 EVT build and integrated learning** | 2026-11-18 → 2026-11-11 (-7d) | 2027-01-29 → 2027-01-19 (-10d) | 46d → 43d | -2d → 7d |  |  |
| 3.1 | Fabricate and assemble Rev1 engineering boards | 2026-12-14 → 2026-12-02 (-12d) | 2027-01-04 → 2026-12-15 (-20d) | 15d → 10d | -1d → 12d |  |  |
| 3.2 | Rev1 board shipment, import and incoming inspection | 2027-01-05 → 2026-12-16 (-20d) | 2027-01-09 → 2026-12-20 (-20d) |  | -2d → 18d |  |  |
| 3.3 | External gate - Rev1 bring-up firmware and diagnostic tools | 2026-11-18 → 2026-11-11 (-7d) | 2026-12-08 → 2026-11-19 (-19d) | 15d → 7d | 15d → 28d |  |  |
| 3.4 | Bring up Rev1 PCBA with current-limited staged power | 2027-01-11 → 2026-12-21 (-21d) | 2027-01-15 → 2027-01-05 (-10d) |  | -1d → 7d |  |  |
| 3.5 | Rev1 power, input fault screening and radio transient tests | 2027-01-18 → 2027-01-06 (-12d) | 2027-01-29 → 2027-01-19 (-10d) |  | -1d → 7d | 3.4, Bound Rev1 input fault stresses before destructive testing → 3.4 |  |
| 3.6 | Rev1 antenna, coexistence and EMC pre-scan | 2027-01-18 → 2027-01-06 (-12d) | 2027-01-29 → 2027-01-19 (-10d) |  | -1d → 7d |  |  |
| 3.7 | Rev1 integrated membrane, housing and sensor experiments | 2027-01-18 → 2027-01-06 (-12d) | 2027-01-29 → 2027-01-19 (-10d) |  | -1d → 7d |  |  |
| 3.8 | G2 - Rev1 EVT findings and Rev2 change list approved | 2027-01-29 → 2027-01-19 (-10d) | 2027-01-29 → 2027-01-19 (-10d) |  | -1d → 7d |  |  |
| 4 | **04 - Rev2 and tool-ready design freeze** | 2027-01-29 → 2027-01-19 (-10d) | 2027-03-01 → 2027-02-26 (-3d) | 20d → 27d | -1d → 0d |  |  |
| 4.1 | G3a - Cellular SIM and satellite launch decision | 2027-01-29 → 2027-01-19 (-10d) | 2027-01-29 → 2027-01-19 (-10d) |  | -1d → 7d |  |  |
| 4.2 | Rev2 electrical changes, worst-case closure and schematic review | 2027-02-01 → 2027-01-20 (-12d) | 2027-02-12 → 2027-02-02 (-10d) |  | -1d → 7d |  |  |
| 4.3 | Rev2 layout, RF and DFM review | 2027-02-16 → 2027-02-03 (-13d) | 2027-03-01 → 2027-02-17 (-12d) |  | -1d → 7d |  |  |
| 4.4 | Tool-ready enclosure, vent process and cable assembly DFM | 2027-02-01 → 2027-01-20 (-12d) | 2027-02-12 → 2027-02-02 (-10d) |  | 4d → 12d |  |  |
| 4.5 | Cross-discipline design risk and verification review | 2027-02-16 → 2027-02-03 (-13d) | 2027-02-22 → 2027-02-09 (-13d) |  | 4d → 12d |  |  |
| 4.7 | G3 - Release Rev2 PCBA and housing tooling | 2027-03-01 → 2027-02-26 (-3d) | 2027-03-01 → 2027-02-26 (-3d) |  | -1d → 0d |  |  |
| 5 | **05 - Rev2 / T1 first molded integration** | 2027-03-02 → 2027-03-01 (-1d) | 2027-04-16 → 2027-04-15 (-1d) |  | -3d → 0d |  |  |
| 5.1 | Build Rev2 production-intent boards | 2027-03-02 → 2027-03-01 (-1d) | 2027-03-22 → 2027-03-19 (-3d) |  | -1d → 0d |  |  |
| 5.2 | Ship and inspect Rev2 boards | 2027-03-23 → 2027-03-20 (-3d) | 2027-03-27 → 2027-03-24 (-3d) |  | -3d → 0d |  |  |
| 5.3 | External gate - Rev2 DVT and RF test firmware | 2027-03-02 → 2027-03-01 (-1d) | 2027-03-22 → 2027-03-19 (-3d) |  | 2d → 3d |  |  |
| 5.4 | Rev2 incoming bring-up and early lab sample release | 2027-03-29 → 2027-03-25 (-4d) | 2027-03-30 → 2027-03-29 (-1d) |  | -1d → 0d |  |  |
| 5.5 | Complete Rev2 electrical fix verification alongside lab testing | 2027-03-31 → 2027-03-30 (-1d) | 2027-04-09 → 2027-04-08 (-1d) |  | -1d → 0d |  |  |
| 5.6 | T1 - Cut clamshell and included strain-relief tooling | 2027-03-02 → 2027-03-01 (-1d) | 2027-03-29 → 2027-03-26 (-3d) |  | -1d → 0d |  |  |
| 5.7 | T1 - First shots, supplier metrology and assembly samples | 2027-03-30 → 2027-03-29 (-1d) | 2027-04-05 → 2027-04-02 (-3d) |  | -1d → 0d |  |  |
| 5.8 | T1 - Air shipment and incoming sample inspection | 2027-04-06 → 2027-04-03 (-3d) | 2027-04-10 → 2027-04-07 (-3d) |  | -2d → 1d |  |  |
| 5.9 | T1 - Mechanical and electrical assembly evaluation | 2027-04-12 → 2027-04-09 (-3d) | 2027-04-16 → 2027-04-15 (-1d) |  | -1d → 0d |  |  |
| 5.10 | G4 - T1 integrated evaluation and correction list accepted | 2027-04-16 → 2027-04-15 (-1d) | 2027-04-16 → 2027-04-15 (-1d) |  | -1d → 0d |  |  |
| 5.11 | Rev2 EMC / RF readiness pre-scan using prototype housing | 2027-03-31 → 2027-03-30 (-1d) | 2027-04-13 → 2027-04-12 (-1d) |  | 2d → 3d |  |  |
| 6 | **06 - T2 correction and preproduction validation** | 2027-04-19 → 2027-04-16 (-3d) | 2027-06-03 → 2027-06-02 (-1d) |  | -1d → 0d |  |  |
| 6.1 | Freeze T2 correction package and final test limits | 2027-04-19 → 2027-04-16 (-3d) | 2027-04-23 → 2027-04-22 (-1d) |  | -1d → 0d |  |  |
| 6.2 | T2 - Tool corrections and process adjustments | 2027-04-26 → 2027-04-23 (-3d) | 2027-05-12 → 2027-05-11 (-1d) |  | -1d → 0d |  |  |
| 6.3 | T2 - Repeat trial and supplier first-article inspection | 2027-05-13 → 2027-05-12 (-1d) | 2027-05-14 → 2027-05-13 (-1d) |  | -1d → 0d |  |  |
| 6.4 | T2 - Air shipment and incoming inspection | 2027-05-15 → 2027-05-14 (-1d) | 2027-05-19 → 2027-05-18 (-1d) |  | -1d → 0d |  |  |
| 6.5 | T2 - Integrated mechanical and electrical evaluation | 2027-05-20 → 2027-05-19 (-1d) | 2027-06-03 → 2027-06-02 (-1d) |  | -1d → 0d |  |  |
| 6.6 | G5 - T2 preproduction candidate accepted | 2027-06-03 → 2027-06-02 (-1d) | 2027-06-03 → 2027-06-02 (-1d) |  | -1d → 0d |  |  |
| 7 | **07 - Rev2 / T1 qualification in parallel with T2 tooling** | 2027-03-02 → 2027-03-01 (-1d) | 2027-06-22 → 2027-06-16 (-6d) | 79d → 76d | 6d → 10d |  |  |
| 7.1 | Confirm lab bookings, sample matrix and regulatory configuration | 2027-03-02 → 2027-03-01 (-1d) | 2027-03-08 → 2027-03-05 (-3d) |  | 17d → 18d |  |  |
| 7.2 | Accept representative T1 assemblies for formal lab work | 2027-04-19 → 2027-04-16 (-3d) | 2027-04-20 → 2027-04-19 (-1d) |  | 7d → 11d |  |  |
| 7.3 | Rev2 vehicle power qualification - prototype housing allowed | 2027-03-31 → 2027-03-30 (-1d) | 2027-04-13 → 2027-04-12 (-1d) |  | 37d → 41d |  |  |
| 7.4 | T1 accessible-assembly ESD and enclosed thermal confirmation | 2027-04-21 → 2027-04-20 (-1d) | 2027-04-27 → 2027-04-26 (-1d) |  | 32d → 36d |  |  |
| 7.5 | T1 enclosure, environmental and cable qualification | 2027-04-21 → 2027-04-20 (-1d) | 2027-05-18 → 2027-05-17 (-1d) |  | 17d → 21d |  |  |
| 7.6 | T1 US FCC / Canada ISED host RF, emissions and exposure assessment | 2027-04-21 → 2027-04-20 (-1d) | 2027-06-02 → 2027-06-01 (-1d) |  | 7d → 11d |  |  |
| 7.7 | Rev2 cellular/operator and conditional NTN conducted / protocol campaign | 2027-03-31 → 2027-03-30 (-1d) | 2027-04-27 → 2027-04-26 (-1d) |  | 22d → 26d |  |  |
| 7.8 | T1 cellular OTA / antenna and provider acceptance completion | 2027-04-28 → 2027-04-27 (-1d) | 2027-05-11 → 2027-05-10 (-1d) |  | 22d → 26d |  |  |
| 7.9 | Complete Bluetooth product qualification | 2027-03-31 → 2027-03-30 (-1d) | 2027-04-13 → 2027-04-12 (-1d) |  | 42d → 46d |  |  |
| 7.10 | Battery, transport, material and product safety documentation | 2027-03-09 → 2027-03-08 (-1d) | 2027-03-30 → 2027-03-29 (-1d) |  | 52d → 56d |  |  |
| 7.11 | Preliminary T2 qualification change-impact review | 2027-06-04 → 2027-05-19 (-16d) | 2027-06-08 → 2027-05-21 (-18d) |  | 6d → 17d | 6.6, 7.6, 7.8, 7.3, 7.4, 7.5, 7.9, 7.10 → 6.4 | was named T2 change-impact review and qualification carry-forward decision |
| 7.12 | Prepare labels, installation instructions and compliance file | 2027-06-03 → 2027-06-02 (-1d) | 2027-06-16 → 2027-06-15 (-1d) |  | 10d → 11d |  |  |
| 7.13 | Final T2 qualification disposition and affected retest reserve | 2027-06-09 → 2027-06-03 (-6d) | 2027-06-22 → 2027-06-16 (-6d) |  | 6d → 10d | 7.11 → 6.6, 7.6, 7.8, 7.3, 7.4, 7.5, 7.9, 7.10, 7.11 | was named T2 delta retests / lab confirmation reserve |
| 7.14 | G6 - Qualification and US/Canada release evidence accepted | 2027-06-22 → 2027-06-16 (-6d) | 2027-06-22 → 2027-06-16 (-6d) |  | 6d → 10d |  |  |
| 8 | **08 - Manufacturing system and software handoff gates** | 2027-03-02 → 2027-03-01 (-1d) | 2027-07-02 → 2027-06-30 (-2d) | 85d → 86d | -1d → 0d |  |  |
| 8.1 | Design production programming and end-of-line fixtures | 2027-03-02 → 2027-03-01 (-1d) | 2027-03-15 → 2027-03-12 (-3d) |  | 45d → 46d |  |  |
| 8.2 | Build and correlate fixtures with golden/reference units | 2027-04-12 → 2027-04-09 (-3d) | 2027-04-30 → 2027-04-29 (-1d) |  | 30d → 31d |  |  |
| 8.3 | External gate - Factory firmware, provisioning and test tools | 2027-03-23 → 2027-03-22 (-1d) | 2027-04-20 → 2027-04-19 (-1d) |  | 40d → 41d |  |  |
| 8.4 | External gate - Integrated product release candidate | 2027-03-23 → 2027-03-22 (-1d) | 2027-05-04 → 2027-05-03 (-1d) |  | 40d → 41d |  |  |
| 8.5 | Create assembly SOPs, quality control and training package | 2027-06-04 → 2027-06-03 (-1d) | 2027-06-17 → 2027-06-16 (-1d) |  | 9d → 10d |  |  |
| 8.6 | Approve production material availability and logistics plan | 2027-06-04 → 2027-06-03 (-1d) | 2027-07-01 → 2027-06-30 (-1d) |  | -1d → 0d |  |  |
| 8.7 | G7 - Controlled pilot build readiness | 2027-07-02 → 2027-06-30 (-2d) | 2027-07-02 → 2027-06-30 (-2d) |  |  |  |  |
| 9 | **09 - Pilot, production release and ramp** | 2027-07-02 → 2027-07-01 (-1d) | 2027-09-22 → 2027-09-21 (-1d) | 57d → 56d |  |  |  |
| 9.1 | Run PVT pilot on intended overseas production line | 2027-07-02 → 2027-07-01 (-1d) | 2027-07-15 → 2027-07-14 (-1d) |  |  |  |  |
| 9.2 | Ship pilot units and verify receiving / fulfillment process | 2027-07-16 → 2027-07-15 (-1d) | 2027-07-20 → 2027-07-19 (-1d) |  |  |  |  |
| 9.3 | Supervised US/Canada vehicle pilot and soak | 2027-07-21 → 2027-07-20 (-1d) | 2027-08-11 → 2027-08-10 (-1d) |  |  |  |  |
| 9.4 | Close pilot defects and approve yield / quality evidence | 2027-08-12 → 2027-08-11 (-1d) | 2027-08-18 → 2027-08-17 (-1d) |  |  |  |  |
| 9.5 | G8 - Authorize mass production release | 2027-08-18 → 2027-08-17 (-1d) | 2027-08-18 → 2027-08-17 (-1d) |  |  |  |  |
| 9.6 | Build first mass-production lot and controlled ramp | 2027-08-19 → 2027-08-18 (-1d) | 2027-09-15 → 2027-09-14 (-1d) |  |  |  |  |

| ID | Task | Start | Finish |
| --- | --- | --- | --- |
| 9.7 | First MP lot outgoing audit and shipment release | 2027-09-16 → 2027-09-15 (-1d) | 2027-09-22 → 2027-09-21 (-1d) |
| 9.8 | G9 - First mass-production lot ready to ship | 2027-09-22 → 2027-09-21 (-1d) | 2027-09-22 → 2027-09-21 (-1d) |

## Version 4 (saved 2026-11-01)

Note of the change: feat(planning): balance resources while preserving the July pilot

Last finish 2027-09-21 → 2027-09-23 (+2d).

Changed:

| ID | Task | Start | Finish | Duration | Total float | Other |
| --- | --- | --- | --- | --- | --- | --- |
| 1 | **01 - Current position and program decisions** |  | 2026-12-04 → 2026-12-17 (+13d) | 25d → 34d | 12d → -2d |  |
| 1.2 | Confirm US/Canada launch requirements and installation envelope |  |  |  | 14d → 0d | resources none → Profili |
| 1.3 | Agree certification and qualification matrix with accredited lab |  |  |  | 14d → 0d | resources none → Sofeast |
| 1.4 | Select overseas build partners and reserve indicative capacity |  |  |  | 14d → 0d | resources none → Sofeast |
| 1.6 | Evaluate physical SIM / eUICC provider and roaming | 2026-11-09 → 2026-11-20 (+11d) | 2026-11-27 → 2026-12-10 (+13d) |  | 37d → 20d | resources none → Profili |
| 1.7 | Evaluate nRF9151 satellite service and supported hardware/firmware | 2026-11-09 → 2026-11-20 (+11d) | 2026-12-04 → 2026-12-17 (+13d) |  | 32d → 15d | resources none → Profili |
| 2.1 | Close Rev1 schematic review and BOM metadata |  |  |  | 12d → -2d | resources none → Profili; Sofeast |
| 2.2 | Complete Rev1 routing and RF / power / mechanical review |  |  |  | 12d → -2d | resources none → Profili; Sofeast |
| 2.3 | Rev1 PCBA DFM, AVL availability and release package |  |  |  | 12d → -2d | resources none → Profili; Sofeast |
| 2.5 | Design clamshell and interfaces for prototype manufacture |  |  |  | 17d → 15d | resources none → Sofeast |
| 2.6 | Select humidity vent and MEMS acoustic membrane stacks |  |  |  | 17d → 15d | resources none → Sofeast |
| 2.7 | Print housing variants and hand-build membrane/grill/pigtail prototypes |  |  |  | 17d → 15d | resources none → Sofeast |
| 2.8 | Evaluate printed enclosure fit, acoustic/RH and cable interfaces |  |  |  | 17d → 15d | resources none → Sofeast |
| 3.1 | Fabricate and assemble Rev1 engineering boards |  |  |  | 12d → -2d | resources none → Sofeast |
| 3.3 | External gate - Rev1 bring-up firmware and diagnostic tools |  |  |  | 28d → 20d | resources none → Profili |
| 3.4 | Bring up Rev1 PCBA with current-limited staged power |  |  |  | 7d → -1d | resources none → Profili; Sofeast |
| 3.5 | Rev1 power, input fault screening and radio transient tests |  |  |  | 7d → -1d | resources none → Profili; Sofeast |
| 3.6 | Rev1 antenna, coexistence and EMC pre-scan |  |  |  | 7d → -1d | resources none → Profili; Sofeast |
| 3.7 | Rev1 integrated membrane, housing and sensor experiments |  |  |  | 7d → -1d | resources none → Profili; Sofeast |
| 4 | **04 - Rev2 and tool-ready design freeze** |  | 2027-02-26 → 2027-02-25 (-1d) | 27d → 26d | 0d → -1d |  |
| 4.2 | Rev2 electrical changes, worst-case closure and schematic review |  |  |  | 7d → -1d | resources none → Profili; Sofeast |
| 4.3 | Rev2 layout, RF and DFM review |  | 2027-02-17 → 2027-02-25 (+8d) |  | 7d → -1d | resources none → Profili; Sofeast |
| 4.4 | Tool-ready enclosure, vent process and cable assembly DFM |  |  |  | 12d → 5d | resources none → Sofeast |
| 4.5 | Cross-discipline design risk and verification review |  | 2027-02-09 → 2027-02-18 (+9d) |  | 12d → 4d | resources none → Profili; Sofeast |
| 4.6 | Approve mold design, tooling contract and trial plan | 2027-02-22 → 2027-02-03 (-19d) | 2027-02-26 → 2027-02-17 (-9d) |  | 0d → 5d | resources none → Sofeast |
| 4.7 | G3 - Release Rev2 PCBA and housing tooling | 2027-02-26 → 2027-02-25 (-1d) | 2027-02-26 → 2027-02-25 (-1d) |  | 0d → -1d |  |
| 5 | **05 - Rev2 / T1 first molded integration** | 2027-03-01 → 2027-02-26 (-3d) |  | 33d → 34d | 0d → -1d |  |
| 5.1 | Build Rev2 production-intent boards | 2027-03-01 → 2027-02-26 (-3d) | 2027-03-19 → 2027-03-18 (-1d) |  | 0d → -1d | resources none → Sofeast |
| 5.2 | Ship and inspect Rev2 boards | 2027-03-20 → 2027-03-19 (-1d) | 2027-03-24 → 2027-03-23 (-1d) |  | 0d → -1d |  |
| 5.3 | External gate - Rev2 DVT and RF test firmware | 2027-03-01 → 2027-02-26 (-3d) | 2027-03-19 → 2027-03-18 (-1d) |  | 3d → 2d | resources none → Profili |
| 5.4 | Rev2 incoming bring-up and early lab sample release | 2027-03-25 → 2027-03-24 (-1d) | 2027-03-29 → 2027-03-25 (-4d) |  | 0d → -1d | resources none → Profili; Sofeast |
| 5.5 | Complete Rev2 electrical fix verification alongside lab testing | 2027-03-30 → 2027-03-29 (-1d) |  |  | 0d → -1d | resources none → Profili; Sofeast |
| 5.6 | T1 - Cut clamshell and included strain-relief tooling | 2027-03-01 → 2027-02-26 (-3d) | 2027-03-26 → 2027-03-25 (-1d) |  | 0d → 1d | resources none → Sofeast |
| 5.7 | T1 - First shots, supplier metrology and assembly samples | 2027-03-29 → 2027-03-26 (-3d) | 2027-04-02 → 2027-04-01 (-1d) |  | 0d → 1d | resources none → Sofeast |
| 5.8 | T1 - Air shipment and incoming sample inspection | 2027-04-03 → 2027-04-02 (-1d) | 2027-04-07 → 2027-04-06 (-1d) |  |  |  |
| 5.9 | T1 - Mechanical and electrical assembly evaluation |  |  |  | 0d → -1d | resources none → Profili; Sofeast |
| 5.11 | Rev2 EMC / RF readiness pre-scan using prototype housing | 2027-03-30 → 2027-03-29 (-1d) |  |  | 3d → 2d | resources none → Profili; Sofeast |
| 6.1 | Freeze T2 correction package and final test limits |  |  |  | 0d → -1d | resources none → Profili; Sofeast |
| 6.2 | T2 - Tool corrections and process adjustments |  |  |  | 0d → -1d | resources none → Sofeast |
| 6.3 | T2 - Repeat trial and supplier first-article inspection |  |  |  | 0d → -1d | resources none → Sofeast |
| 6.5 | T2 - Integrated mechanical and electrical evaluation |  |  |  | 0d → -1d | resources none → Profili; Sofeast |
| 7 | **07 - Rev2 / T1 qualification in parallel with T2 tooling** | 2027-03-01 → 2027-02-26 (-3d) | 2027-06-16 → 2027-06-21 (+5d) | 76d → 80d | 10d → 7d |  |
| 7.1 | Confirm lab bookings, sample matrix and regulatory configuration | 2027-03-01 → 2027-02-26 (-3d) | 2027-03-05 → 2027-03-04 (-1d) |  | 18d → 17d | resources none → Profili; Sofeast |
| 7.2 | Accept representative T1 assemblies for formal lab work |  |  |  | 11d → 7d | resources none → Profili; Sofeast |
| 7.3 | Rev2 vehicle power qualification - prototype housing allowed | 2027-03-30 → 2027-03-29 (-1d) |  |  | 41d → 37d | resources none → Profili; Sofeast |
| 7.4 | T1 accessible-assembly ESD and enclosed thermal confirmation |  |  |  | 36d → 32d | resources none → Profili; Sofeast |
| 7.5 | T1 enclosure, environmental and cable qualification |  | 2027-05-17 → 2027-05-20 (+3d) |  | 21d → 17d | resources none → Sofeast |
| 7.6 | T1 US FCC / Canada ISED host RF, emissions and exposure assessment |  | 2027-06-01 → 2027-06-04 (+3d) |  | 11d → 7d | resources none → Profili; Sofeast |
| 7.7 | Rev2 cellular/operator and conditional NTN conducted / protocol campaign | 2027-03-30 → 2027-03-29 (-1d) |  |  | 26d → 22d | resources none → Profili; Sofeast |
| 7.8 | T1 cellular OTA / antenna and provider acceptance completion |  | 2027-05-10 → 2027-05-13 (+3d) |  | 26d → 22d | resources none → Profili; Sofeast |
| 7.9 | Complete Bluetooth product qualification | 2027-03-30 → 2027-03-29 (-1d) |  |  | 46d → 42d | resources none → Profili; Sofeast |
| 7.10 | Battery, transport, material and product safety documentation | 2027-03-08 → 2027-03-05 (-3d) | 2027-03-29 → 2027-03-25 (-4d) |  | 56d → 54d | resources none → Sofeast |
| 7.11 | Preliminary T2 qualification change-impact review |  |  |  | 17d → 16d | resources none → Profili; Sofeast |
| 7.12 | Prepare labels, installation instructions and compliance file | 2027-06-02 → 2027-06-07 (+5d) | 2027-06-15 → 2027-06-21 (+6d) |  | 11d → 7d | resources none → Profili; Sofeast |
| 7.13 | Final T2 qualification disposition and affected retest reserve | 2027-06-03 → 2027-06-07 (+4d) | 2027-06-16 → 2027-06-21 (+5d) |  | 10d → 7d | resources none → Profili; Sofeast |
| 7.14 | G6 - Qualification and US/Canada release evidence accepted | 2027-06-16 → 2027-06-21 (+5d) | 2027-06-16 → 2027-06-21 (+5d) |  | 10d → 7d |  |
| 8 | **08 - Manufacturing system and software handoff gates** | 2027-03-01 → 2027-03-05 (+4d) | 2027-06-30 → 2027-07-02 (+2d) | 86d → 82d | 0d → -1d |  |
| 8.1 | Design production programming and end-of-line fixtures | 2027-03-01 → 2027-03-05 (+4d) | 2027-03-12 → 2027-03-18 (+6d) |  | 46d → 25d | resources none → Profili; Sofeast |
| 8.2 | Build and correlate fixtures with golden/reference units |  |  |  | 31d → 29d | resources none → Profili; Sofeast |
| 8.3 | External gate - Factory firmware, provisioning and test tools | 2027-03-22 → 2027-04-13 (+22d) | 2027-04-19 → 2027-05-10 (+21d) |  | 41d → 26d | resources none → Profili |
| 8.4 | External gate - Integrated product release candidate | 2027-03-22 → 2027-05-11 (+50d) | 2027-05-03 → 2027-06-22 (+50d) |  | 41d → 6d | resources none → Profili |
| 8.5 | Create assembly SOPs, quality control and training package |  | 2027-06-16 → 2027-06-17 (+1d) |  | 10d → 9d | resources none → Sofeast |
| 8.6 | Approve production material availability and logistics plan |  | 2027-06-30 → 2027-07-01 (+1d) |  | 0d → -1d | resources none → Sofeast |
| 8.7 | G7 - Controlled pilot build readiness | 2027-06-30 → 2027-07-02 (+2d) | 2027-06-30 → 2027-07-02 (+2d) |  |  |  |
| 9 | **09 - Pilot, production release and ramp** | 2027-07-01 → 2027-07-02 (+1d) | 2027-09-21 → 2027-09-23 (+2d) | 56d → 58d |  |  |
| 9.1 | Run PVT pilot on intended overseas production line | 2027-07-01 → 2027-07-02 (+1d) | 2027-07-14 → 2027-07-15 (+1d) |  |  | resources none → Sofeast |
| 9.2 | Ship pilot units and verify receiving / fulfillment process | 2027-07-15 → 2027-07-16 (+1d) | 2027-07-19 → 2027-07-20 (+1d) |  |  |  |
| 9.3 | Supervised US/Canada vehicle pilot and soak | 2027-07-20 → 2027-07-21 (+1d) | 2027-08-10 → 2027-08-11 (+1d) |  |  | resources none → Profili |
| 9.4 | Close pilot defects and approve yield / quality evidence | 2027-08-11 → 2027-08-12 (+1d) | 2027-08-17 → 2027-08-18 (+1d) |  |  | resources none → Profili; Sofeast |
| 9.5 | G8 - Authorize mass production release | 2027-08-17 → 2027-08-18 (+1d) | 2027-08-17 → 2027-08-18 (+1d) |  |  |  |

| ID | Task | Start | Finish | Other |
| --- | --- | --- | --- | --- |
| 9.6 | Build first mass-production lot and controlled ramp | 2027-08-18 → 2027-08-19 (+1d) | 2027-09-14 → 2027-09-16 (+2d) | resources none → Sofeast |
| 9.7 | First MP lot outgoing audit and shipment release | 2027-09-15 → 2027-09-17 (+2d) | 2027-09-21 → 2027-09-23 (+2d) | resources none → Sofeast |
| 9.8 | G9 - First mass-production lot ready to ship | 2027-09-21 → 2027-09-23 (+2d) | 2027-09-21 → 2027-09-23 (+2d) |  |

## Version 5 (saved 2026-11-01)

Note of the change: update and reporting/resource stuff

Last finish stays 2027-09-23.

Changed:

| ID | Task | Start | Finish | Duration | Total float | Other |
| --- | --- | --- | --- | --- | --- | --- |
| 1.2 | Confirm US/Canada launch requirements |  |  |  |  | was named Confirm US/Canada launch requirements and installation envelope |
| 4 | **04 - Rev2 and tool-ready design freeze** |  |  | 26d → 20d |  |  |
| 5 | **05 - Rev2 / T1 first molded integration** |  |  | 34d → 33d |  |  |
| 6 | **06 - T2 correction and preproduction validation** |  |  | 33d → 30d |  |  |
| 7 | **07 - Rev2 / T1 qualification in parallel with T2 tooling** |  |  | 80d → 75d |  |  |
| 8 | **08 - Manufacturing system and software handoff gates** |  |  | 82d → 77d |  |  |
| 8.3 | External gate - Factory firmware, provisioning and test tools | 2027-04-13 → 2027-04-14 (+1d) | 2027-05-10 → 2027-05-14 (+4d) |  | 26d → 21d |  |
| 8.4 | External gate - Integrated product release candidate | 2027-05-11 → 2027-05-17 (+6d) | 2027-06-22 → 2027-06-29 (+7d) |  | 6d → 1d |  |
| 9 | **09 - Pilot, production release and ramp** |  |  | 58d → 57d |  |  |

## Version 6 (saved 2026-11-01)

Last finish stays 2027-09-23.

Added:

| ID | Task | Duration | Start | Finish | Predecessors | Resources |
| --- | --- | --- | --- | --- | --- | --- |
| 3 | **02 - Program decisions and coordination** | 34d | 2026-11-02 | 2026-12-17 |  |  |
| 3.2 | Coordinate certification and qualification matrix with accredited lab | 10d | 2026-11-09 | 2026-11-20 | 3.1 | Sofeast |
| 3.3 | Coordinate Rev1 build with existing overseas manufacturer | 3d | 2026-11-09 | 2026-11-11 | 3.1 | Sofeast |
| 3.4 | Agree Rev1 sample allocation and test budget | 2d | 2026-11-12 | 2026-11-13 | 3.3 |  |
| 3.5 | Profili - Evaluate physical SIM / eUICC provider and roaming | 15d | 2026-11-20 | 2026-12-10 | 3.1 | Profili |
| 3.7 | G0 - Early requirements and coordination aligned | 0d | 2026-11-20 | 2026-11-20 | 3.2, 3.3, 3.4 |  |

Removed: 1 01 - Current position and program decisions; 1.3 Agree certification and qualification matrix with accredited lab; 1.4 Select overseas build partners and reserve indicative capacity; 1.5 Approve sample allocation and destructive-test budgets; 1.6 Evaluate physical SIM / eUICC provider and roaming; 1.8 G0 - Requirements, test strategy and supplier assumptions accepted

Changed:

| ID | Task | Predecessors | Other |
| --- | --- | --- | --- |
| 2 | **01 - Rev1 PCB and prototype housing release** |  | was named 02 - Rev1 PCB and prototype housing release |
| 2.3 | Rev1 PCBA DFM, AVL availability and release package | 2.2, Select overseas build partners and reserve indicative capacity → 2.2, 3.3 |  |
| 4.1 | Fabricate and assemble Rev1 engineering boards | 2.4, Approve sample allocation and destructive-test budgets → 2.4, 3.4 |  |
| 4.8 | G2 - Rev1 EVT findings and Rev2 change list approved | 4.5, 4.6, 4.7, G0 - Requirements, test strategy and supplier assumptions accepted → 4.5, 4.6, 4.7, 3.7 |  |
| 5.1 | G3a - Cellular SIM and satellite launch decision | Evaluate physical SIM / eUICC provider and roaming, 3.6, 4.8 → 3.5, 3.6, 4.8 |  |
| 5.6 | Approve mold design, tooling contract and trial plan | 5.4, Select overseas build partners and reserve indicative capacity → 5.4, 3.3 |  |
| 5.7 | G3 - Release Rev2 PCBA and housing tooling | 5.3, 5.6, 5.5, Agree certification and qualification matrix with accredited lab → 5.3, 5.6, 5.5, 3.2 |  |
| 8.1 | Confirm lab bookings, sample matrix and regulatory configuration | 5.7, Agree certification and qualification matrix with accredited lab → 5.7, 3.2 |  |
| 9.1 | Design production programming and end-of-line fixtures | 5.7, Approve sample allocation and destructive-test budgets → 5.7, 3.4 |  |
| 9.6 | Approve production material availability and logistics plan | 7.6, Select overseas build partners and reserve indicative capacity, 5.1 → 7.6, 3.3, 5.1 |  |
