How a schedule from an exported table changed from version to version. A marks actual dates.

## Version 1 (saved 2026-11-01)

Note of the change: feat(planning): add Carport hardware schedule and IFC tooling

| ID | Task | Start | Finish |
| --- | --- | --- | --- |
| P0 | 01 - Current position and program decisions | 2026-11-02T09:00 | 2026-12-04T17:00 |
| START | Planning start - Rev0 complete; Rev1 schematic in review and layout underway | 2026-11-02T09:00 | 2026-11-02T09:00 |
| SCOPE | Confirm US/Canada launch requirements and installation envelope | 2026-11-02T09:00 | 2026-11-06T17:00 |
| LABPLAN | Agree certification and qualification matrix with accredited lab | 2026-11-09T09:00 | 2026-11-20T17:00 |
| SUPPLY | Select overseas build partners and reserve indicative capacity | 2026-11-09T09:00 | 2026-11-20T17:00 |
| LOTPLAN | Approve sample allocation and destructive-test budgets | 2026-11-23T09:00 | 2026-11-27T17:00 |
| SIMPILOT | Evaluate physical SIM / eUICC provider and roaming | 2026-11-09T09:00 | 2026-11-27T17:00 |
| NTNEVAL | Evaluate nRF9151 satellite service and supported hardware/firmware | 2026-11-09T09:00 | 2026-12-04T17:00 |
| G0 | G0 - Requirements, test strategy and supplier assumptions accepted | 2026-11-27T17:00 | 2026-11-27T17:00 |
| P1 | 02 - Rev1 PCB and prototype housing release | 2026-11-09T09:00 | 2026-12-11T17:00 |
| SCHCLOSE | Close Rev1 schematic review and BOM metadata | 2026-11-09T09:00 | 2026-11-17T17:00 |
| POWERBOUND | Bound Rev1 input fault stresses before destructive testing | 2026-11-09T09:00 | 2026-11-20T17:00 |
| LAYOUT | Complete Rev1 routing and RF / power / mechanical review | 2026-11-23T09:00 | 2026-12-04T17:00 |
| R1DFM | Rev1 PCBA DFM, AVL availability and release package | 2026-12-07T09:00 | 2026-12-11T17:00 |
| R1REL | G1 - Release Rev1 PCBA prototype run | 2026-12-11T17:00 | 2026-12-11T17:00 |
| MEARCH | Design clamshell and interfaces for prototype manufacture | 2026-11-09T09:00 | 2026-11-20T17:00 |
| VENTSELECT | Select humidity vent and MEMS acoustic membrane stacks | 2026-11-09T09:00 | 2026-11-20T17:00 |
| PRINTS | Print housing variants and hand-build membrane/grill/pigtail prototypes | 2026-11-23T09:00 | 2026-12-04T17:00 |
| PROTOME | Evaluate printed enclosure fit, acoustic/RH and cable interfaces | 2026-12-07T09:00 | 2026-12-11T17:00 |
| P2 | 03 - Rev1 EVT build and integrated learning | 2026-11-18T09:00 | 2027-01-29T17:00 |
| R1BUILD | Fabricate and assemble Rev1 engineering boards | 2026-12-14T09:00 | 2027-01-04T17:00 |
| R1SHIP | Rev1 board shipment, import and incoming inspection | 2027-01-05T09:00 | 2027-01-09T17:00 |
| SWREV1 | External gate - Rev1 bring-up firmware and diagnostic tools | 2026-11-18T09:00 | 2026-12-08T17:00 |
| R1BRING | Bring up Rev1 PCBA with current-limited staged power | 2027-01-11T09:00 | 2027-01-15T17:00 |
| R1POWER | Rev1 power, input fault screening and radio transient tests | 2027-01-18T09:00 | 2027-01-29T17:00 |
| R1RF | Rev1 antenna, coexistence and EMC pre-scan | 2027-01-18T09:00 | 2027-01-29T17:00 |
| R1SENSE | Rev1 integrated membrane, housing and sensor experiments | 2027-01-18T09:00 | 2027-01-29T17:00 |
| R1EVT | G2 - Rev1 EVT findings and Rev2 change list approved | 2027-01-29T17:00 | 2027-01-29T17:00 |
| P3 | 04 - Rev2 and tool-ready design freeze | 2027-01-29T17:00 | 2027-03-01T17:00 |
| CONNECTDEC | G3a - Cellular SIM and satellite launch decision | 2027-01-29T17:00 | 2027-01-29T17:00 |
| R2SCHEM | Rev2 electrical changes, worst-case closure and schematic review | 2027-02-01T09:00 | 2027-02-12T17:00 |
| R2LAYOUT | Rev2 layout, RF and DFM review | 2027-02-16T09:00 | 2027-03-01T17:00 |
| MEDFM | Tool-ready enclosure, vent process and cable assembly DFM | 2027-02-01T09:00 | 2027-02-12T17:00 |
| FMEA | Cross-discipline design risk and verification review | 2027-02-16T09:00 | 2027-02-22T17:00 |
| TOOLQUOTE | Approve mold design, tooling contract and trial plan | 2027-02-22T09:00 | 2027-02-26T17:00 |
| FREEZE | G3 - Release Rev2 PCBA and housing tooling | 2027-03-01T17:00 | 2027-03-01T17:00 |
| P4 | 05 - Rev2 / T1 first molded integration | 2027-03-02T09:00 | 2027-04-30T17:00 |
| R2BUILD | Build Rev2 production-intent boards | 2027-03-02T09:00 | 2027-03-22T17:00 |
| R2SHIP | Ship and inspect Rev2 boards | 2027-03-23T09:00 | 2027-03-27T17:00 |
| SWDVT | External gate - Rev2 DVT and RF test firmware | 2027-03-02T09:00 | 2027-03-22T17:00 |
| R2VERIFY | Validate Rev2 electrical fixes before enclosed DVT | 2027-03-29T09:00 | 2027-04-09T17:00 |
| T1CUT | T1 - Cut clamshell and included strain-relief tooling | 2027-03-02T09:00 | 2027-03-29T17:00 |
| T1TRIAL | T1 - First shots, supplier metrology and assembly samples | 2027-03-30T09:00 | 2027-04-05T17:00 |
| T1SHIP | T1 - Air shipment and incoming sample inspection | 2027-04-06T09:00 | 2027-04-10T17:00 |
| T1EVAL | T1 - Mechanical and electrical assembly evaluation | 2027-04-12T09:00 | 2027-04-16T17:00 |
| T1GATE | G4 - T1 integrated evaluation and correction list accepted | 2027-04-16T17:00 | 2027-04-16T17:00 |
| PRECOMP | Production-intent Rev2 / T1 EMC and RF readiness pre-scan | 2027-04-19T09:00 | 2027-04-30T17:00 |
| P5 | 06 - T2 correction and preproduction validation | 2027-05-03T09:00 | 2027-06-11T17:00 |
| T2ECO | Freeze T2 correction package and final test limits | 2027-05-03T09:00 | 2027-05-07T17:00 |
| T2FIX | T2 - Tool corrections and process adjustments | 2027-05-10T09:00 | 2027-05-21T17:00 |
| T2TRIAL | T2 - Repeat trial and supplier first-article inspection | 2027-05-24T09:00 | 2027-05-25T17:00 |
| T2SHIP | T2 - Air shipment and incoming inspection | 2027-05-26T09:00 | 2027-05-30T17:00 |
| T2EVAL | T2 - Integrated mechanical and electrical evaluation | 2027-05-31T09:00 | 2027-06-11T17:00 |
| T2GATE | G5 - T2 preproduction candidate accepted | 2027-06-11T17:00 | 2027-06-11T17:00 |
| P6 | 07 - Formal qualification and US/Canada market access | 2027-03-02T09:00 | 2027-08-10T17:00 |
| LABBOOK | Confirm lab bookings, sample matrix and regulatory configuration | 2027-03-02T09:00 | 2027-03-08T17:00 |
| QUALPOWER | Formal vehicle electrical / ESD qualification | 2027-06-14T09:00 | 2027-06-25T17:00 |
| QUALENV | Formal enclosure, environmental and cable qualification | 2027-06-14T09:00 | 2027-07-12T17:00 |
| FCCIC | US FCC / Canada ISED host RF, emissions and exposure assessment | 2027-06-14T09:00 | 2027-07-26T17:00 |
| CELLAPPROVE | Cellular/operator and conditional NTN acceptance | 2027-06-14T09:00 | 2027-07-26T17:00 |
| BTSIG | Complete Bluetooth product qualification | 2027-06-14T09:00 | 2027-06-25T17:00 |
| BATT | Battery, transport, material and product safety documentation | 2027-06-14T09:00 | 2027-07-05T17:00 |
| REGDOC | Approve final labels, installation instructions and compliance file | 2027-07-27T09:00 | 2027-08-10T17:00 |
| RETESTBUF | Visible qualification / lab retest contingency | 2027-07-27T09:00 | 2027-08-10T17:00 |
| MARKET | G6 - Qualification and US/Canada release evidence accepted | 2027-08-10T17:00 | 2027-08-10T17:00 |
| P7 | 08 - Manufacturing system and software handoff gates | 2027-03-02T09:00 | 2027-08-10T17:00 |
| FIXDES | Design production programming and end-of-line fixtures | 2027-03-02T09:00 | 2027-03-15T17:00 |
| FIXBUILD | Build and correlate fixtures with golden/reference units | 2027-04-12T09:00 | 2027-04-30T17:00 |
| SWFACT | External gate - Factory firmware, provisioning and test tools | 2027-03-23T09:00 | 2027-04-20T17:00 |
| SWPRODUCT | External gate - Integrated product release candidate | 2027-03-23T09:00 | 2027-05-04T17:00 |

| ID | Task | Start | Finish |
| --- | --- | --- | --- |
| SOP | Create assembly SOPs, quality control and training package | 2027-06-14T09:00 | 2027-06-25T17:00 |
| MATERIAL | Approve production material availability and logistics plan | 2027-06-14T09:00 | 2027-07-09T17:00 |
| PVTREADY | G7 - Controlled pilot build readiness | 2027-08-10T17:00 | 2027-08-10T17:00 |
| P8 | 09 - Pilot, production release and ramp | 2027-08-11T09:00 | 2027-11-08T17:00 |
| PVTBUILD | Run PVT pilot on intended overseas production line | 2027-08-11T09:00 | 2027-08-24T17:00 |
| PVTSHIP | Ship pilot units and verify receiving / fulfillment process | 2027-08-25T09:00 | 2027-08-29T17:00 |
| PILOTFIELD | Supervised US/Canada vehicle pilot and soak | 2027-08-30T09:00 | 2027-09-20T17:00 |
| PVTCLOSE | Close pilot defects and approve yield / quality evidence | 2027-09-21T09:00 | 2027-09-27T17:00 |
| MPREL | G8 - Authorize mass production release | 2027-09-27T17:00 | 2027-09-27T17:00 |
| MPBUILD | Build first mass-production lot and controlled ramp | 2027-09-28T09:00 | 2027-11-01T17:00 |
| MPAUDIT | First MP lot outgoing audit and shipment release | 2027-11-02T09:00 | 2027-11-08T17:00 |
| MP | G9 - First mass-production lot ready to ship | 2027-11-08T17:00 | 2027-11-08T17:00 |

## Version 2 (saved 2026-11-01)

Note of the change: feat(planning): overlap qualification with Rev2 and T1 builds

Last finish 2027-11-08 → 2027-09-22 (-47d).

Added:

| ID | Task | Start | Finish |
| --- | --- | --- | --- |
| R2BRING | Rev2 incoming bring-up and early lab sample release | 2027-03-29T09:00 | 2027-03-30T17:00 |
| LABSAMPLE | Accept representative T1 assemblies for formal lab work | 2027-04-19T09:00 | 2027-04-20T17:00 |
| QUALASSEMBLY | T1 accessible-assembly ESD and enclosed thermal confirmation | 2027-04-21T09:00 | 2027-04-27T17:00 |
| CELLFINAL | T1 cellular OTA / antenna and provider acceptance completion | 2027-04-28T09:00 | 2027-05-11T17:00 |
| QUALDELTA | T2 change-impact review and qualification carry-forward decision | 2027-06-04T09:00 | 2027-06-08T17:00 |

Changed:

| ID | Task | Start | Finish | Other |
| --- | --- | --- | --- | --- |
| P4 | 05 - Rev2 / T1 first molded integration |  | 2027-04-30T17:00 → 2027-04-16T17:00 (-14d) |  |
| R2VERIFY | Complete Rev2 electrical fix verification alongside lab testing | 2027-03-29T09:00 → 2027-03-31T09:00 (+2d) |  | was named Validate Rev2 electrical fixes before enclosed DVT |
| PRECOMP | Rev2 EMC / RF readiness pre-scan using prototype housing | 2027-04-19T09:00 → 2027-03-31T09:00 (-19d) | 2027-04-30T17:00 → 2027-04-13T17:00 (-17d) | was named Production-intent Rev2 / T1 EMC and RF readiness pre-scan |
| P5 | 06 - T2 correction and preproduction validation | 2027-05-03T09:00 → 2027-04-19T09:00 (-14d) | 2027-06-11T17:00 → 2027-06-03T17:00 (-8d) |  |
| T2ECO | Freeze T2 correction package and final test limits | 2027-05-03T09:00 → 2027-04-19T09:00 (-14d) | 2027-05-07T17:00 → 2027-04-23T17:00 (-14d) |  |
| T2FIX | T2 - Tool corrections and process adjustments | 2027-05-10T09:00 → 2027-04-26T09:00 (-14d) | 2027-05-21T17:00 → 2027-05-12T17:00 (-9d) |  |
| T2TRIAL | T2 - Repeat trial and supplier first-article inspection | 2027-05-24T09:00 → 2027-05-13T09:00 (-11d) | 2027-05-25T17:00 → 2027-05-14T17:00 (-11d) |  |
| T2SHIP | T2 - Air shipment and incoming inspection | 2027-05-26T09:00 → 2027-05-15T09:00 (-11d) | 2027-05-30T17:00 → 2027-05-19T17:00 (-11d) |  |
| T2EVAL | T2 - Integrated mechanical and electrical evaluation | 2027-05-31T09:00 → 2027-05-20T09:00 (-11d) | 2027-06-11T17:00 → 2027-06-03T17:00 (-8d) |  |
| T2GATE | G5 - T2 preproduction candidate accepted | 2027-06-11T17:00 → 2027-06-03T17:00 (-8d) | 2027-06-11T17:00 → 2027-06-03T17:00 (-8d) |  |
| P6 | 07 - Rev2 / T1 qualification in parallel with T2 tooling |  | 2027-08-10T17:00 → 2027-06-22T17:00 (-49d) | was named 07 - Formal qualification and US/Canada market access |
| QUALPOWER | Rev2 vehicle power qualification - prototype housing allowed | 2027-06-14T09:00 → 2027-03-31T09:00 (-75d) | 2027-06-25T17:00 → 2027-04-13T17:00 (-73d) | was named Formal vehicle electrical / ESD qualification |
| QUALENV | T1 enclosure, environmental and cable qualification | 2027-06-14T09:00 → 2027-04-21T09:00 (-54d) | 2027-07-12T17:00 → 2027-05-18T17:00 (-55d) | was named Formal enclosure, environmental and cable qualification |
| FCCIC | T1 US FCC / Canada ISED host RF, emissions and exposure assessment | 2027-06-14T09:00 → 2027-04-21T09:00 (-54d) | 2027-07-26T17:00 → 2027-06-02T17:00 (-54d) | was named US FCC / Canada ISED host RF, emissions and exposure assessment |
| CELLAPPROVE | Rev2 cellular/operator and conditional NTN conducted / protocol campaign | 2027-06-14T09:00 → 2027-03-31T09:00 (-75d) | 2027-07-26T17:00 → 2027-04-27T17:00 (-90d) | was named Cellular/operator and conditional NTN acceptance |
| BTSIG | Complete Bluetooth product qualification | 2027-06-14T09:00 → 2027-03-31T09:00 (-75d) | 2027-06-25T17:00 → 2027-04-13T17:00 (-73d) |  |
| BATT | Battery, transport, material and product safety documentation | 2027-06-14T09:00 → 2027-03-09T09:00 (-97d) | 2027-07-05T17:00 → 2027-03-30T17:00 (-97d) |  |
| REGDOC | Prepare labels, installation instructions and compliance file | 2027-07-27T09:00 → 2027-06-03T09:00 (-54d) | 2027-08-10T17:00 → 2027-06-16T17:00 (-55d) | was named Approve final labels, installation instructions and compliance file |
| RETESTBUF | T2 delta retests / lab confirmation reserve | 2027-07-27T09:00 → 2027-06-09T09:00 (-48d) | 2027-08-10T17:00 → 2027-06-22T17:00 (-49d) | was named Visible qualification / lab retest contingency |
| MARKET | G6 - Qualification and US/Canada release evidence accepted | 2027-08-10T17:00 → 2027-06-22T17:00 (-49d) | 2027-08-10T17:00 → 2027-06-22T17:00 (-49d) |  |
| P7 | 08 - Manufacturing system and software handoff gates |  | 2027-08-10T17:00 → 2027-07-02T09:00 (-39d) |  |
| SOP | Create assembly SOPs, quality control and training package | 2027-06-14T09:00 → 2027-06-04T09:00 (-10d) | 2027-06-25T17:00 → 2027-06-17T17:00 (-8d) |  |
| MATERIAL | Approve production material availability and logistics plan | 2027-06-14T09:00 → 2027-06-04T09:00 (-10d) | 2027-07-09T17:00 → 2027-07-01T17:00 (-8d) |  |
| PVTREADY | G7 - Controlled pilot build readiness | 2027-08-10T17:00 → 2027-07-02T09:00 (-39d) | 2027-08-10T17:00 → 2027-07-02T09:00 (-39d) |  |
| P8 | 09 - Pilot, production release and ramp | 2027-08-11T09:00 → 2027-07-02T09:00 (-40d) | 2027-11-08T17:00 → 2027-09-22T17:00 (-47d) |  |
| PVTBUILD | Run PVT pilot on intended overseas production line | 2027-08-11T09:00 → 2027-07-02T09:00 (-40d) | 2027-08-24T17:00 → 2027-07-15T17:00 (-40d) |  |
| PVTSHIP | Ship pilot units and verify receiving / fulfillment process | 2027-08-25T09:00 → 2027-07-16T09:00 (-40d) | 2027-08-29T17:00 → 2027-07-20T17:00 (-40d) |  |
| PILOTFIELD | Supervised US/Canada vehicle pilot and soak | 2027-08-30T09:00 → 2027-07-21T09:00 (-40d) | 2027-09-20T17:00 → 2027-08-11T17:00 (-40d) |  |
| PVTCLOSE | Close pilot defects and approve yield / quality evidence | 2027-09-21T09:00 → 2027-08-12T09:00 (-40d) | 2027-09-27T17:00 → 2027-08-18T17:00 (-40d) |  |
| MPREL | G8 - Authorize mass production release | 2027-09-27T17:00 → 2027-08-18T17:00 (-40d) | 2027-09-27T17:00 → 2027-08-18T17:00 (-40d) |  |
| MPBUILD | Build first mass-production lot and controlled ramp | 2027-09-28T09:00 → 2027-08-19T09:00 (-40d) | 2027-11-01T17:00 → 2027-09-15T17:00 (-47d) |  |
| MPAUDIT | First MP lot outgoing audit and shipment release | 2027-11-02T09:00 → 2027-09-16T09:00 (-47d) | 2027-11-08T17:00 → 2027-09-22T17:00 (-47d) |  |
| MP | G9 - First mass-production lot ready to ship | 2027-11-08T17:00 → 2027-09-22T17:00 (-47d) | 2027-11-08T17:00 → 2027-09-22T17:00 (-47d) |  |
